# 魔法项目进度表

How a schedule from MS Project changed from version to version. A marks actual dates.

## Version 1 (saved 2012-02-27, file 魔法项目进度表.mpp)

Note of the change: doc add

| ID | WBS | Task | Duration | Start | Finish | Predecessors | Total float | Constraint |
| --- | --- | --- | --- | --- | --- | --- | --- | --- |
| 1 | 1 | **策划进度安排** | 37d? | 2012-02-06 | 2012-03-27 |  | 9d |  |
| 2 | 1.1 | **策划和前期准备** | 17d? | 2012-02-06 | 2012-02-28 |  | 50d |  |
| 3 |  | 策划初稿审核（概念策划） | 2d | 2012-02-06 | 2012-02-07 |  | 33.5d | start no earlier than 2012-02-06 |
| 4 |  | 审核 | 1d | 2012-02-10 | 2012-02-10 | 3 | 53d | start no earlier than 2012-02-10 |
| 5 |  | 完整原型（框架策划，逻辑流程图） | 8d | 2012-02-16 | 2012-02-27 | 4 | 50d | finish no earlier than 2012-02-27 |
| 6 |  | 审核和确认 | 1d? | 2012-02-28 | 2012-02-28 | 5 | 28.5d | start no earlier than 2012-02-27 |
| 7 | 1.2 | **策划模块详细** | 36d? | 2012-02-07 | 2012-03-27 |  | 8d |  |
| 8 | 1.2.1 | **战斗模块** | 4d? | 2012-02-07 | 2012-02-10 |  | 51d |  |
| 9 |  | 详细策划和DEMO | 3d | 2012-02-07 | 2012-02-09 |  | 29.5d | finish no earlier than 2012-02-09 |
| 10 |  | 和美术和技术核对需求，做需求分析 | 1d? | 2012-02-10 | 2012-02-10 | 9 | 51d | start no earlier than 2012-02-10 |
| 11 | 1.2.2 | **合成模块** | 4d? | 2012-02-07 | 2012-02-10 |  | 8d |  |
| 12 |  | 详细策划和DEMO（仓库，图鉴） | 3d | 2012-02-07 | 2012-02-09 |  | 5d | finish no earlier than 2012-02-09 |
| 13 |  | 和美术和技术核对需求，做需求分析 | 1d? | 2012-02-10 | 2012-02-10 | 12 | 8d | start no earlier than 2012-02-10 |
| 14 | 1.2.3 | **主场景** | 2d? | 2012-02-23 | 2012-02-24 |  | 52d |  |
| 15 |  | 详细策划和DEMO | 1d | 2012-02-23 | 2012-02-23 |  | 30.5d | start no earlier than 2012-02-23 |
| 16 |  | 和美术和技术核对需求，做需求分析 | 1d? | 2012-02-24 | 2012-02-24 | 15 | 30.5d | start no earlier than 2012-02-10 |
| 17 | 1.2.4 | **经营模块** | 8d? | 2012-02-14 | 2012-02-23 |  | 44d |  |
| 18 |  | 详细策划和DEMO | 7d | 2012-02-14 | 2012-02-22 |  | 22.5d | finish no earlier than 2012-02-22 |
| 19 |  | 和美术和技术核对需求，做图量和需求分析 | 1d? | 2012-02-23 | 2012-02-23 | 18 | 44d | start no earlier than 2012-02-23 |
| 20 | 1.2.5 | **冒险模块** | 19d? | 2012-02-20 | 2012-03-15 | 11 | 3d |  |
| 21 |  | 详细策划和DEMO | 4d | 2012-02-23 | 2012-02-28 |  | 0d | start no earlier than 2012-02-23 |
| 22 |  | 和美术和技术核对需求，做需求分析 | 1d? | 2012-02-29 | 2012-02-29 | 21 | 0d | start no earlier than 2012-02-10 |
| 23 |  | 确定副本的规则 | 3d | 2012-03-01 | 2012-03-05 | 22 | 0d |  |
| 24 |  | 素材内容和列表收集 | 12d | 2012-02-20 | 2012-03-06 |  | 6.5d | start no earlier than 2012-02-20 |
| 25 |  | 挑选和确认 | 1d | 2012-03-07 | 2012-03-07 | 24 | 1.5d |  |
| 26 |  | 美术核对和制作 | 1d | 2012-03-08 | 2012-03-08 | 25 | 1.5d |  |
| 27 |  | 地图编辑器编辑 | 5d | 2012-03-09 | 2012-03-15 | 26 | 1.5d |  |
| 28 | 1.2.6 | **佣兵模块** | 5.5d? | 2012-02-24 | 2012-03-02 | 17 | 44d |  |
| 29 |  | 详细策划和DEMO | 5d | 2012-02-24 | 2012-03-01 | 19 | 22.5d | finish no earlier than 2012-02-09 |
| 30 |  | 和美术和技术核对需求，做需求分析 | 0.5d? | 2012-03-02 | 2012-03-02 | 29 | 22.5d | start no earlier than 2012-02-10 |
| 31 | 1.2.7 | **世界地图模块** | 2.5d? | 2012-03-16 | 2012-03-20 | 20 | 6.5d |  |
| 32 |  | 详细策划和DEMO | 2d | 2012-03-16 | 2012-03-19 | 27 | 1.5d | start no earlier than 2012-02-28 |
| 33 |  | 和美术和技术核对需求，做需求分析 | 0.5d? | 2012-03-20 | 2012-03-20 | 32 | 1.5d | start no earlier than 2012-02-10 |
| 34 | 1.2.8 | **道具模块** | 3.5d? | 2012-03-02 | 2012-03-07 | 28 | 44d |  |
| 35 |  | 详细策划和DEMO | 3d | 2012-03-02 | 2012-03-07 | 30 | 22.5d | finish no earlier than 2012-02-09 |
| 36 |  | 和美术和技术核对需求，做需求分析 | 0.5d? | 2012-03-07 | 2012-03-07 | 35 | 22.5d | start no earlier than 2012-02-10 |
| 37 | 1.2.9 | **任务和剧情模块** | 3.5d? | 2012-03-20 | 2012-03-23 | 31 | 21.5d |  |
| 38 |  | 详细策划和DEMO | 3d | 2012-03-20 | 2012-03-23 | 33 | 1.5d | start no earlier than 2012-02-22 |
| 39 |  | 和美术和技术核对需求，做需求分析 | 0.5d? | 2012-03-23 | 2012-03-23 | 38 | 1.5d | start no earlier than 2012-02-10 |
| 40 | 1.2.10 | **上线前其他模块** | 2d | 2012-03-26 | 2012-03-27 |  | 21.5d |  |
| 41 |  | 详细策划和DEMO | 1.5d | 2012-03-26 | 2012-03-27 | 39 | 1.5d | finish no earlier than 2012-02-09 |
| 42 |  | 和美术和技术核对需求，做需求分析 | 0.5d | 2012-03-27 | 2012-03-27 | 41 | 8.5d | start no earlier than 2012-02-10 |
| 44 | 2 | **任务，剧情，订单内容** | 45.5d | 2012-02-06 | 2012-04-09 |  | 21.5d |  |
| 45 | 2.1 | **策划前期准备** | 9d | 2012-02-06 | 2012-02-16 |  | 49d |  |
| 46 |  | 世界观确定 | 6d | 2012-02-06 | 2012-02-13 |  | 27.5d | start no earlier than 2012-02-06 |
| 47 |  | 落实详细的任务规则(主线任务和支线任务如何穿插） | 3d | 2012-02-14 | 2012-02-16 | 46 | 27.5d | start no earlier than 2011-11-10 |
| 48 | 2.2 | **任务描述的详细内容** | 9d | 2012-03-27 | 2012-04-09 | 45 | 21.5d |  |
| 49 |  | 主线任务文案样板 | 2d | 2012-03-27 | 2012-03-29 | 41 | 1.5d |  |
| 50 |  | 支线任务文案样板 | 2d | 2012-03-29 | 2012-04-02 | 49 | 5d |  |
| 51 |  | 对白 | 7d | 2012-03-29 | 2012-04-09 | 49 | 1.5d |  |
| 52 |  | 订单任务内容 | 3d | 2012-02-28 | 2012-03-01 |  | 48d | start no earlier than 2012-02-28 |
| 54 | 3 | **数值和调试内容** | 11d | 2012-02-29 | 2012-03-14 |  | 39d |  |
| 55 | 3.1 | **策划前期准备** | 4d | 2012-02-29 | 2012-03-05 |  | 39d |  |
| 56 |  | 数值规则 | 4d | 2012-02-29 | 2012-03-05 | 10 | 39d | start no earlier than 2012-02-29 |
| 57 | 3.2 | **数值调试** | 7d | 2012-03-06 | 2012-03-14 | 55 | 39d |  |
| 58 |  | 战斗模块 | 4d | 2012-03-06 | 2012-03-09 |  | 17.5d |  |
| 59 |  | 合成模块 | 3d | 2012-03-06 | 2012-03-08 | 13 | 21.5d |  |
| 60 |  | 主场景模块 | 3d | 2012-03-12 | 2012-03-14 | 58 | 17.5d |  |
| 62 | 4 | **美术开发** | 37d? | 2012-02-09 | 2012-03-30 |  | 27d |  |
| 63 | 4.1 | **风格确定** | 17.5d? | 2012-02-09 | 2012-03-05 |  | 46.5d |  |
| 64 | 4.1.1 | **UI风格确定** | 5.5d? | 2012-02-27 | 2012-03-05 |  | 46.5d |  |
| 65 |  | 参照产品，对比 | 3d? | 2012-02-27 | 2012-02-29 |  | 48.5d | finish no earlier than 2012-02-29 |
| 66 |  | 和策划讨论，确定下风格 | 0.5d | 2012-03-01 | 2012-03-01 | 65 | 48.5d |  |
| 67 |  | 出初稿 | 2d | 2012-03-01 | 2012-03-02 |  | 46.5d | start no earlier than 2012-03-01 |
| 68 |  | 审核，讨论，定稿 | 0.5d | 2012-03-05 | 2012-03-05 | 67 | 46.5d |  |
| 69 |  | 场景风格确定 | 3d | 2012-02-10 | 2012-02-14 |  | 60d | start no earlier than 2012-02-10 |
| 70 |  | 人设和道具风格确定 | 1d | 2012-02-09 | 2012-02-09 |  | 63d | start no earlier than 2012-02-09 |
| 71 | 4.2 | **图量确定** | 36d? | 2012-02-10 | 2012-03-30 |  | 27d |  |
| 72 | 4.2.1 | **美术前期素材（给到技术开发起步用）** | 2d | 2012-02-10 | 2012-02-13 |  | 27d |  |
| 73 |  | 1个场景 | 2d | 2012-02-10 | 2012-02-13 |  | 27d | start no earlier than 2012-02-10 |

| ID | WBS | Task | Duration | Start | Finish | Predecessors | Total float | Constraint |
| --- | --- | --- | --- | --- | --- | --- | --- | --- |
| 74 |  | 1个人物 | 2d | 2012-02-10 | 2012-02-13 |  | 27d | start no earlier than 2012-02-10 |
| 75 |  | 1个UI初稿 | 2d | 2012-02-10 | 2012-02-13 |  | 27d | start no earlier than 2012-02-10 |
| 76 | 4.2.2 | **美术工作量** | 34d? | 2012-02-14 | 2012-03-30 | 72 | 27d |  |
| 77 |  | 美术UI开发 | 34d? | 2012-02-14 | 2012-03-30 |  | 27d |  |
| 78 |  | 美术道具开发 | 26d? | 2012-02-24 | 2012-03-30 |  | 27d | start no earlier than 2012-02-24 |
| 79 |  | 美术人设开发 | 34d? | 2012-02-14 | 2012-03-30 |  | 27d |  |
| 80 |  | 动效 | 19d? | 2012-02-14 | 2012-03-09 |  | 27d |  |
| 81 |  | 过场动画 | 15d? | 2012-03-12 | 2012-03-30 | 80 | 27d |  |
| 82 |  | 场景 | 22d? | 2012-03-01 | 2012-03-30 |  | 27d | start no earlier than 2012-03-01 |
| 84 | 5 | **战斗功能模块开发** | 21d | 2012-02-06 | 2012-03-05 |  | 46d |  |
| 85 | 5.1 | **策划和前期准备** | 5d | 2012-02-06 | 2012-02-10 |  | 62d |  |
| 86 |  | 策划初稿审核（详细策划案，原型，UI需求） | 2d | 2012-02-06 | 2012-02-07 |  | 62d | start no earlier than 2012-02-06 |
| 87 |  | 模块前后端需求分析，设计，定义接口 | 3d | 2012-02-08 | 2012-02-10 |  | 62d | finish no earlier than 2012-02-10 |
| 88 |  | 美术图量分析和风格确定 | 3d | 2012-02-08 | 2012-02-10 | 86 | 62d |  |
| 89 | 5.2 | **开发** | 15d | 2012-02-09 | 2012-02-29 |  | 46d |  |
| 90 | 5.2.1 | **美术前期素材（给到技术开发起步用）** | 2d | 2012-02-10 | 2012-02-13 |  | 61d |  |
| 91 |  | 1个场景 | 2d | 2012-02-10 | 2012-02-13 |  | 61d | start no earlier than 2012-02-10 |
| 92 |  | 1个人物 | 2d | 2012-02-10 | 2012-02-13 |  | 61d | start no earlier than 2012-02-10 |
| 93 |  | 1个UI初稿 | 2d | 2012-02-10 | 2012-02-13 |  | 61d | start no earlier than 2012-02-10 |
| 94 | 5.2.2 | **前端开发** | 15d | 2012-02-09 | 2012-02-29 |  | 46d |  |
| 95 |  | 项目需求分析，模块定义，接口定义，代码设计 | 3d | 2012-02-10 | 2012-02-14 |  | 60d | start no earlier than 2012-02-10 |
| 96 |  | CODING | 15d | 2012-02-09 | 2012-02-29 |  | 46d | finish no earlier than 2012-02-29 |
| 97 | 5.2.3 | **后端开发** | 12d | 2012-02-13 | 2012-02-28 |  | 50d |  |
| 98 |  | 项目需求分析，模块定义，接口定义，代码设计 | 2d | 2012-02-13 | 2012-02-14 |  | 60d | start no earlier than 2012-02-13 |
| 99 |  | CODING | 11d | 2012-02-14 | 2012-02-28 |  | 50d | start no earlier than 2012-02-14 |
| 100 | 5.2.4 | **美术工作** | 11d | 2012-02-15 | 2012-02-29 |  | 49d |  |
| 101 |  | 美术UI开发 | 7d | 2012-02-20 | 2012-02-28 |  | 50d | start no earlier than 2012-02-20 |
| 102 |  | 美术道具开发 | 4d | 2012-02-20 | 2012-02-23 |  | 53d | start no earlier than 2012-02-20 |
| 103 |  | 美术人设开发 | 11d | 2012-02-15 | 2012-02-29 |  | 49d | finish no earlier than 2012-02-29 |
| 104 |  | 联调和测试 | 3d | 2012-03-01 | 2012-03-05 | 96 | 46d | start no earlier than 2012-02-28 |
| 106 | 6 | **合成模块开发** | 15d | 2012-02-06 | 2012-02-24 |  | 6d |  |
| 107 | 6.1 | **策划和前期准备** | 7d | 2012-02-06 | 2012-02-14 |  | 14d |  |
| 108 |  | 策划初稿审核（详细策划案，原型，UI需求） | 2d | 2012-02-06 | 2012-02-07 |  | 19d | start no earlier than 2012-02-06 |
| 109 |  | 模块前后端需求分析，设计，定义接口 | 3d | 2012-02-10 | 2012-02-14 |  | 14d | start no earlier than 2012-02-10 |
| 110 |  | 美术图量分析和风格确定 | 2d | 2012-02-09 | 2012-02-10 |  | 16d | start no earlier than 2012-02-09 |
| 111 | 6.2 | **开发** | 2d | 2012-02-22 | 2012-02-23 |  | 7d |  |
| 112 | 6.2.1 | **美术前期素材（给到技术开发起步用）** | 2d | 2012-02-22 | 2012-02-23 |  | 7d |  |
| 113 |  | 1个场景 | 2d | 2012-02-22 | 2012-02-23 |  | 7d | start no earlier than 2012-02-22 |
| 114 |  | 1个人物 | 2d | 2012-02-22 | 2012-02-23 |  | 7d | start no earlier than 2012-02-22 |
| 115 |  | 1个UI初稿 | 2d | 2012-02-22 | 2012-02-23 |  | 7d | start no earlier than 2012-02-22 |
| 116 | 6.3 | **前端开发** | 9d | 2012-02-09 | 2012-02-21 |  | 9d |  |
| 117 |  | 项目需求分析，模块定义，接口定义，代码设计 | 3d | 2012-02-13 | 2012-02-15 |  | 13d | start no earlier than 2012-02-13 |
| 118 |  | CODING | 9d | 2012-02-09 | 2012-02-21 |  | 9d | finish no earlier than 2012-02-21 |
| 119 | 6.4 | **后端开发** | 8d | 2012-02-13 | 2012-02-22 |  | 7d |  |
| 120 |  | 项目需求分析，模块定义，接口定义，代码设计 | 2d | 2012-02-13 | 2012-02-14 |  | 14d | start no earlier than 2012-02-13 |
| 121 |  | CODING | 7d | 2012-02-14 | 2012-02-22 |  | 6d | finish no earlier than 2012-02-22 |
| 123 |  | 联调和测试 | 2d | 2012-02-23 | 2012-02-24 | 121 | 6d | start no earlier than 2012-02-17 |
| 125 | 7 | **经营模块开发** | 18d | 2012-02-23 | 2012-03-19 |  | 17d |  |
| 126 | 7.1 | **策划和前期准备** | 4d | 2012-02-23 | 2012-02-28 |  | 17d |  |
| 127 |  | 策划初稿审核（详细策划案，原型，逻辑流程图） | 2d | 2012-02-23 | 2012-02-24 |  | 22d | start no earlier than 2012-02-23 |
| 128 |  | 模块前后端需求分析，设计，定义接口 | 2d | 2012-02-27 | 2012-02-28 | 127 | 22d | start no earlier than 2012-02-10 |
| 129 |  | 美术图量分析和确定前置美术 | 2d | 2012-02-23 | 2012-02-24 |  | 17d | start no earlier than 2012-02-23 |
| 130 | 7.2 | **开发** | 12d | 2012-02-24 | 2012-03-12 |  | 18d |  |
| 131 | 7.2.1 | **美术前期素材（给到技术开发起步用）** | 2d | 2012-02-24 | 2012-02-27 | 112 | 32d |  |
| 132 |  | 1个场景 | 2d | 2012-02-24 | 2012-02-27 |  | 32d | start no earlier than 2012-02-10 |
| 133 |  | 1个人物 | 2d | 2012-02-24 | 2012-02-27 |  | 32d | start no earlier than 2012-02-10 |
| 134 |  | 1个UI初稿 | 2d | 2012-02-24 | 2012-02-27 |  | 32d | start no earlier than 2012-02-10 |
| 135 | 7.2.2 | **前端开发** | 11d | 2012-02-27 | 2012-03-12 |  | 17d |  |
| 136 |  | 项目需求分析，模块定义，接口定义，代码设计 | 2d | 2012-02-27 | 2012-02-28 | 129 | 17d | start no earlier than 2012-02-13 |
| 137 |  | CODING | 9d | 2012-02-29 | 2012-03-12 | 136 | 17d | finish no earlier than 2012-02-21 |
| 138 | 7.2.3 | **后端开发** | 9d | 2012-02-29 | 2012-03-12 |  | 22d |  |
| 139 |  | 项目需求分析，模块定义，接口定义，代码设计 | 2d | 2012-02-29 | 2012-03-01 | 128 | 22d | start no earlier than 2012-02-13 |
| 140 |  | CODING | 7d | 2012-03-02 | 2012-03-12 | 139 | 22d | finish no earlier than 2012-02-21 |
| 142 |  | 联调和测试 | 5d | 2012-03-13 | 2012-03-19 | 137 | 17d | start no earlier than 2012-02-17 |
| 144 | 8 | **冒险模块开发** | 17d | 2012-03-06 | 2012-03-28 | 106 | 0d |  |
| 145 | 8.1 | **策划和前期准备** | 6d | 2012-03-06 | 2012-03-13 |  | 0d |  |
| 146 |  | 策划初稿审核（详细策划案，原型，UI需求） | 3d | 2012-03-06 | 2012-03-08 | 23 | 0d | start no earlier than 2012-02-06 |
| 147 |  | 模块前后端需求分析，设计，定义接口 | 3d | 2012-03-09 | 2012-03-13 | 146 | 0d | start no earlier than 2012-02-10 |
| 148 |  | 美术图量分析 | 2d | 2012-03-09 | 2012-03-12 | 146 | 6d | start no earlier than 2012-02-09 |
| 149 | 8.2 | **开发** | 7d | 2012-03-13 | 2012-03-21 |  | 1d |  |

| ID | WBS | Task | Duration | Start | Finish | Predecessors | Total float | Constraint |
| --- | --- | --- | --- | --- | --- | --- | --- | --- |
| 150 | 8.2.1 | **美术前期素材（给到技术开发起步用）** | 2d | 2012-03-13 | 2012-03-14 | 148 | 10d |  |
| 151 |  | 1个场景 | 2d | 2012-03-13 | 2012-03-14 |  | 10d | start no earlier than 2012-02-10 |
| 152 |  | 1个人物 | 2d | 2012-03-13 | 2012-03-14 |  | 10d | start no earlier than 2012-02-10 |
| 153 |  | 1个UI初稿 | 2d | 2012-03-13 | 2012-03-14 |  | 10d | start no earlier than 2012-02-10 |
| 154 | 8.2.2 | **前端开发** | 6d | 2012-03-14 | 2012-03-21 | 147 | 0d |  |
| 155 |  | 项目需求分析，模块定义，接口定义，代码设计 | 2d | 2012-03-14 | 2012-03-15 |  | 4d | start no earlier than 2012-02-13 |
| 156 |  | CODING | 6d | 2012-03-14 | 2012-03-21 |  | 0d | finish no earlier than 2012-02-21 |
| 157 | 8.2.3 | **后端开发** | 6d | 2012-03-13 | 2012-03-20 | 148 | 6d |  |
| 158 |  | 项目需求分析，模块定义，接口定义，代码设计 | 2d | 2012-03-13 | 2012-03-14 |  | 10d | start no earlier than 2012-02-13 |
| 159 |  | CODING | 6d | 2012-03-13 | 2012-03-20 |  | 6d | finish no earlier than 2012-02-21 |
| 161 |  | 联调和测试 | 5d | 2012-03-22 | 2012-03-28 | 154 | 0d | start no earlier than 2012-02-17 |
| 163 | 9 | **佣兵模块开发** | 16d | 2012-03-20 | 2012-04-10 | 125 | 17d |  |
| 164 | 9.1 | **策划和前期准备** | 5d | 2012-03-20 | 2012-03-26 |  | 17d |  |
| 165 |  | 策划初稿审核（详细策划案，原型，UI需求） | 2d | 2012-03-20 | 2012-03-21 |  | 17d | start no earlier than 2012-02-06 |
| 166 |  | 模块前后端需求分析，设计，定义接口 | 3d | 2012-03-22 | 2012-03-26 | 165 | 17d | start no earlier than 2012-02-10 |
| 167 |  | 美术图量分析 | 2d | 2012-03-22 | 2012-03-23 | 165 | 25d | start no earlier than 2012-02-09 |
| 168 | 9.2 | **开发** | 7d | 2012-03-26 | 2012-04-03 |  | 18d |  |
| 169 | 9.2.1 | **美术前期素材（给到技术开发起步用）** | 2d | 2012-03-26 | 2012-03-27 | 167 | 27d |  |
| 170 |  | 1个场景 | 2d | 2012-03-26 | 2012-03-27 |  | 27d | start no earlier than 2012-02-10 |
| 171 |  | 1个人物 | 2d | 2012-03-26 | 2012-03-27 |  | 27d | start no earlier than 2012-02-10 |
| 172 |  | 1个UI初稿 | 2d | 2012-03-26 | 2012-03-27 |  | 27d | start no earlier than 2012-02-10 |
| 173 | 9.2.2 | **前端开发** | 6d | 2012-03-27 | 2012-04-03 | 166 | 17d |  |
| 174 |  | 项目需求分析，模块定义，接口定义，代码设计 | 2d | 2012-03-27 | 2012-03-28 |  | 21d | start no earlier than 2012-02-13 |
| 175 |  | CODING | 6d | 2012-03-27 | 2012-04-03 |  | 17d | finish no earlier than 2012-02-21 |
| 176 | 9.2.3 | **后端开发** | 6d | 2012-03-27 | 2012-04-03 | 166 | 22d |  |
| 177 |  | 项目需求分析，模块定义，接口定义，代码设计 | 2d | 2012-03-27 | 2012-03-28 |  | 26d | start no earlier than 2012-02-13 |
| 178 |  | CODING | 6d | 2012-03-27 | 2012-04-03 |  | 22d | finish no earlier than 2012-02-21 |
| 179 | 9.2.4 | **美术工作** | 4d | 2012-03-26 | 2012-03-29 | 167 | 25d |  |
| 180 |  | 确定美术图量和美术风格 | 4d | 2012-03-26 | 2012-03-29 |  | 25d |  |
| 181 |  | 美术UI开发 | 4d | 2012-03-26 | 2012-03-29 |  | 25d |  |
| 182 |  | 美术道具开发 | 4d | 2012-03-26 | 2012-03-29 |  | 25d |  |
| 183 |  | 美术人设开发 | 4d | 2012-03-26 | 2012-03-29 |  | 25d |  |
| 185 |  | 联调和测试 | 5d | 2012-04-04 | 2012-04-10 | 173 | 17d | start no earlier than 2012-02-17 |
| 187 | 10 | **世界地图模块开发** | 4d | 2012-03-29 | 2012-04-03 | 144 | 0d |  |
| 188 | 10.1 | **策划和前期准备** | 2d | 2012-03-29 | 2012-03-30 | 31 | 0d |  |
| 189 |  | 策划初稿审核（详细策划案，原型，UI需求） | 1d | 2012-03-29 | 2012-03-29 |  | 0d | start no earlier than 2012-02-06 |
| 190 |  | 模块前后端需求分析，设计，定义接口 | 1d | 2012-03-30 | 2012-03-30 | 189 | 0d | start no earlier than 2012-02-10 |
| 191 |  | 美术图量分析和风格确定 | 1d | 2012-03-29 | 2012-03-29 |  | 3d | start no earlier than 2012-02-09 |
| 192 | 10.2 | **开发** | 3d | 2012-03-29 | 2012-04-02 |  | 0d |  |
| 193 | 10.2.1 | **美术前期素材（给到技术开发起步用）** | 2d | 2012-03-29 | 2012-03-30 |  | 1d |  |
| 194 |  | 世界地图 | 2d | 2012-03-29 | 2012-03-30 |  | 1d | start no earlier than 2012-02-10 |
| 195 |  | 动效 | 2d | 2012-03-29 | 2012-03-30 |  | 1d | start no earlier than 2012-02-10 |
| 196 | 10.2.2 | **前端开发** | 3d | 2012-03-29 | 2012-04-02 |  | 0d |  |
| 197 |  | 项目需求分析，模块定义，接口定义，代码设计 | 1d | 2012-04-02 | 2012-04-02 | 190 | 0d | start no earlier than 2012-02-13 |
| 198 |  | CODING | 3d | 2012-03-29 | 2012-04-02 |  | 0d | finish no earlier than 2012-02-21 |
| 199 | 10.2.3 | **后端开发** | 3d | 2012-03-29 | 2012-04-02 |  | 0d |  |
| 200 |  | 项目需求分析，模块定义，接口定义，代码设计 | 1d | 2012-03-29 | 2012-03-29 |  | 2d | start no earlier than 2012-02-13 |
| 201 |  | CODING | 3d | 2012-03-29 | 2012-04-02 |  | 0d | finish no earlier than 2012-02-21 |
| 203 |  | 联调和测试 | 1d | 2012-04-03 | 2012-04-03 | 192 | 0d | start no earlier than 2012-02-17 |
| 205 | 11 | **道具模块开发** | 3d | 2012-04-11 | 2012-04-13 | 163 | 17d |  |
| 206 | 11.1 | **策划和前期准备** | 1d | 2012-04-11 | 2012-04-11 |  | 19d |  |
| 207 |  | 策划初稿审核（详细策划案，原型，UI需求） | 1d | 2012-04-11 | 2012-04-11 |  | 19d | start no earlier than 2012-02-06 |
| 208 |  | 模块前后端需求分析，设计，定义接口 | 1d | 2012-04-11 | 2012-04-11 |  | 19d | start no earlier than 2012-02-10 |
| 209 | 11.2 | **开发** | 3d | 2012-04-11 | 2012-04-13 |  | 17d |  |
| 210 | 11.2.1 | **美术前期素材（给到技术开发起步用）** | 2d | 2012-04-11 | 2012-04-12 |  | 18d |  |
| 211 |  | 1个UI初稿 | 2d | 2012-04-11 | 2012-04-12 |  | 18d | start no earlier than 2012-02-10 |
| 212 | 11.2.2 | **前端开发** | 3d | 2012-04-11 | 2012-04-13 |  | 17d |  |
| 213 |  | 项目需求分析，模块定义，接口定义，代码设计 | 1d | 2012-04-11 | 2012-04-11 |  | 19d | start no earlier than 2012-02-13 |
| 214 |  | CODING | 3d | 2012-04-11 | 2012-04-13 |  | 17d | finish no earlier than 2012-02-21 |
| 215 | 11.2.3 | **后端开发** | 3d | 2012-04-11 | 2012-04-13 |  | 17d |  |
| 216 |  | 项目需求分析，模块定义，接口定义，代码设计 | 1d | 2012-04-11 | 2012-04-11 |  | 19d | start no earlier than 2012-02-13 |
| 217 |  | CODING | 3d | 2012-04-11 | 2012-04-13 |  | 17d | finish no earlier than 2012-02-21 |
| 219 |  | 联调和测试 | 1d | 2012-04-11 | 2012-04-11 |  | 19d | start no earlier than 2012-02-17 |
| 221 | 12 | **任务和剧情模块开发** | 10d | 2012-04-04 | 2012-04-17 | 187 | 0d |  |
| 222 | 12.1 | **策划和前期准备** | 1d | 2012-04-04 | 2012-04-04 |  | 0d |  |
| 223 |  | 策划初稿审核（详细策划案，原型，UI需求） | 1d | 2012-04-04 | 2012-04-04 |  | 0d | start no earlier than 2012-02-06 |
| 224 |  | 模块前后端需求分析，设计，定义接口 | 1d | 2012-04-04 | 2012-04-04 |  | 0d | start no earlier than 2012-02-10 |
| 225 |  | 美术图量分析和风格确定 | 1d | 2012-04-04 | 2012-04-04 |  | 0d | start no earlier than 2012-02-09 |
| 226 | 12.2 | **美术前期素材（给到技术开发起步用）** | 2d | 2012-04-05 | 2012-04-06 | 222 | 7d |  |
| 227 |  | 1个UI初稿 | 2d | 2012-04-05 | 2012-04-06 |  | 7d | start no earlier than 2012-02-10 |

| ID | WBS | Task | Duration | Start | Finish | Predecessors | Total float | Constraint |
| --- | --- | --- | --- | --- | --- | --- | --- | --- |
| 228 | 12.3 | **前端开发** | 4d | 2012-04-05 | 2012-04-10 | 222 | 0d |  |
| 229 |  | 项目需求分析，模块定义，接口定义，代码设计 | 1d | 2012-04-05 | 2012-04-05 |  | 8d | start no earlier than 2012-02-13 |
| 230 |  | CODING | 4d | 2012-04-05 | 2012-04-10 |  | 0d | finish no earlier than 2012-02-21 |
| 231 | 12.4 | **后端开发** | 4d | 2012-04-05 | 2012-04-10 | 222 | 5d |  |
| 232 |  | 项目需求分析，模块定义，接口定义，代码设计 | 1d | 2012-04-05 | 2012-04-05 |  | 8d | start no earlier than 2012-02-13 |
| 233 |  | CODING | 4d | 2012-04-05 | 2012-04-10 |  | 5d | finish no earlier than 2012-02-21 |
| 235 |  | 联调和测试 | 5d | 2012-04-11 | 2012-04-17 | 230 | 0d | start no earlier than 2012-02-17 |
| 237 | 13 | **上线前需完成模块** | 3d? | 2012-04-18 | 2012-04-20 | 221 | 10d |  |
| 238 | 13.1 | **交互系统** | 3d | 2012-04-18 | 2012-04-20 |  | 10d |  |
| 239 |  | 策划初稿审核 | 2d | 2012-04-18 | 2012-04-19 |  | 11d | start no earlier than 2012-02-06 |
| 240 |  | 开发 | 3d | 2012-04-18 | 2012-04-20 |  | 10d | start no earlier than 2012-02-10 |
| 241 |  | 测试 | 2d | 2012-04-18 | 2012-04-19 |  | 11d | start no earlier than 2012-02-09 |
| 242 | 13.2 | **礼物系统** | 2d? | 2012-04-18 | 2012-04-19 |  | 11d |  |
| 243 |  | 移植 | 2d | 2012-04-18 | 2012-04-19 |  | 11d |  |
| 244 |  | 导入礼物的内容 | 2d | 2012-04-18 | 2012-04-19 |  | 11d |  |
| 245 |  | 测试 | 1d? | 2012-04-18 | 2012-04-18 |  | 12d |  |
| 246 | 13.3 | **消息和日志** | 2d? | 2012-04-18 | 2012-04-19 |  | 11d |  |
| 247 |  | 移植 | 2d | 2012-04-18 | 2012-04-19 |  | 11d |  |
| 248 |  | 导入礼物的内容 | 2d | 2012-04-18 | 2012-04-19 |  | 11d |  |
| 249 |  | 测试 | 1d? | 2012-04-18 | 2012-04-18 |  | 12d |  |
| 250 | 13.4 | **新手引导** | 2d? | 2012-04-18 | 2012-04-19 |  | 11d |  |
| 251 |  | 移植 | 2d | 2012-04-18 | 2012-04-19 |  | 11d |  |
| 252 |  | 导入礼物的内容 | 2d | 2012-04-18 | 2012-04-19 |  | 11d |  |
| 253 |  | 测试 | 1d? | 2012-04-18 | 2012-04-18 |  | 12d |  |
| 254 | 13.5 | **每日登陆奖励** | 2d? | 2012-04-18 | 2012-04-19 |  | 11d |  |
| 255 |  | 移植 | 2d | 2012-04-18 | 2012-04-19 |  | 11d |  |
| 256 |  | 导入礼物的内容 | 2d | 2012-04-18 | 2012-04-19 |  | 11d |  |
| 257 |  | 测试 | 1d? | 2012-04-18 | 2012-04-18 |  | 12d |  |
| 259 | 14 | **后台数据监控** | 2d? | 2012-04-23 | 2012-04-24 | 237 | 10d |  |
| 260 |  | 策划 | 2d | 2012-04-23 | 2012-04-24 |  | 10d |  |
| 261 |  | 开发 | 2d | 2012-04-23 | 2012-04-24 |  | 10d |  |
| 258 |  | 测试 | 1d? | 2012-04-23 | 2012-04-23 |  | 8d |  |
| 264 | 15 | **测试** | 12d? | 2012-04-18 | 2012-05-03 | 221 | 0d |  |
| 265 |  | 测试计划 | 7d | 2012-04-18 | 2012-04-26 |  | 5d |  |
| 267 |  | 功能测试 | 2d | 2012-04-18 | 2012-04-19 |  | 10d |  |
| 268 |  | 性能测试 | 6d | 2012-04-18 | 2012-04-25 |  | 6d |  |
| 269 |  | 易用行测试 | 1d? | 2012-04-18 | 2012-04-18 |  | 11d |  |
| 272 | 16 | **上线流程** | 3d | 2012-05-04 | 2012-05-08 | 264 | 0d |  |
| 273 | 16.1 | **接入准备** | 3d | 2012-05-04 | 2012-05-08 |  | 0d |  |
| 274 |  | 商务合作会谈 | 2d | 2012-05-04 | 2012-05-07 |  | 1d | start no earlier than 2012-02-06 |
| 275 |  | API接入 | 3d | 2012-05-04 | 2012-05-08 |  | 0d | start no earlier than 2012-02-10 |
| 276 |  | 合同签订 | 2d | 2012-05-04 | 2012-05-07 |  | 1d | start no earlier than 2012-02-09 |

## Version 2 (saved 2012-03-02, file 魔法项目进度表20120302V.mpp)

Note of the change: doc add

Last finish 2012-05-08 → 2012-05-10 (+2d). Complete tasks 0 → 37.

Added:

| ID | Task | Duration | Start | Finish | Predecessors | Constraint | Resources |
| --- | --- | --- | --- | --- | --- | --- | --- |
| 11 | 模块验收 | 1d? | 2012-03-06 | 2012-03-06 | 87 |  |  |
| 15 | 模块验收 | 1d? | 2012-02-28 | 2012-02-28 | 109 |  |  |
| 79 | 人物 | 1d? | 2012-02-14 | 2012-02-14 |  |  |  |
| 80 | 怪物 | 1d? | 2012-02-14 | 2012-02-14 |  |  |  |
| 81 | 特效 | 19d? | 2012-02-14 | 2012-03-09 |  |  | 大强 |
| 85 | 战斗场景 | 1d? | 2012-02-27 | 2012-02-27 |  | start no earlier than 2012-02-27 | 张燕南 |
| 86 | 地形块 | 7d? | 2012-02-29 | 2012-03-08 |  | finish no earlier than 2012-03-08 | 张燕南 |
| 108 | 策划和测试确认OK | 1d? | 2012-03-05 | 2012-03-05 |  |  | Eric; 桃子 |
| 126 | **补充联调一次** | 1d? | 2012-02-27 | 2012-02-27 |  |  |  |
| 127 | 策划和测试确认OK | 1d? | 2012-02-27 | 2012-02-27 | 125 |  |  |
| 128 | 背包（仓库） | 3d? | 2012-03-05 | 2012-03-07 |  | finish no earlier than 2012-03-07 |  |
| 129 | 主场景及DIY | 1d | 2012-03-06 | 2012-03-06 |  | start no earlier than 2012-03-06 |  |
| 154 | 世界地图 | 2d | 2012-03-06 | 2012-03-07 |  | start no earlier than 2012-02-10 | 余颖慧 |
| 260 | 压力测试 | 1d? | 2012-04-19 | 2012-04-20 |  |  |  |
| 266 | 展会的参与，市场推广 | 1d? | 2012-05-07 | 2012-05-08 |  |  |  |

Removed: 195 动效

Changed:

| ID | Task | Start | Finish | Duration | Complete | Total float | Predecessors | Other |
| --- | --- | --- | --- | --- | --- | --- | --- | --- |
| 1 | **策划进度安排** | 2012-02-06 A | 2012-03-27 → 2012-04-04 (+8d) | 37d? → 43d? | 0% → 19% | 9d → 25.5d |  |  |
| 7 | **策划模块详细** | 2012-02-07 A | 2012-03-27 → 2012-04-04 (+8d) | 36d? → 42d? | 0% → 23% | 8d → 25.5d |  |  |
| 8 | **战斗模块** | 2012-02-07 A | 2012-02-10 → 2012-03-06 (+25d) | 4d? → 21d? | 0% → 80% | 51d → 46.5d |  |  |
| 9 | 详细策划和DEMO | 2012-02-07 A | 2012-02-09 A |  | 0% → 100% | 29.5d → none |  |  |
| 10 | 和美术和技术核对需求，做需求分析 | 2012-02-10 A | 2012-02-10 A |  | 0% → 100% | 51d → none |  |  |
| 12 | **合成模块** | 2012-02-07 A | 2012-02-10 → 2012-02-28 (+18d) | 4d? → 16d? | 0% → 80% | 8d → 51.5d |  |  |
| 13 | 详细策划和DEMO（仓库，图鉴） | 2012-02-07 A | 2012-02-09 A |  | 0% → 100% | 5d → none |  |  |
| 14 | 和美术和技术核对需求，做需求分析 | 2012-02-10 A | 2012-02-10 A |  | 0% → 100% | 8d → none |  |  |
| 22 | **世界地图模块** | 2012-03-16 → 2012-02-28 A (-17d) | 2012-03-20 → 2012-03-01 A (-19d) |  | 0% → 100% | 6.5d → none | 25 → 12 |  |
| 23 | 详细策划和DEMO | 2012-03-16 → 2012-02-28 A (-17d) | 2012-03-19 → 2012-02-29 A (-19d) |  | 0% → 100% | 1.5d → none | 32 → none |  |
| 24 | 和美术和技术核对需求，做需求分析 | 2012-03-20 → 2012-03-01 A (-19d) | 2012-03-20 → 2012-03-01 A (-19d) |  | 0% → 100% | 1.5d → none |  |  |
| 25 | **冒险模块** | 2012-02-20 → 2012-03-01 A (+10d) | 2012-03-15 → 2012-03-28 (+13d) |  | 0% → 15% | 3d → 17d | 12 → 22 |  |
| 26 | 详细策划和DEMO | 2012-02-23 → 2012-03-01 A (+7d) | 2012-02-28 → 2012-03-07 A (+8d) |  | 0% → 100% | 0d → none |  |  |
| 27 | 和美术和技术核对需求，做需求分析 | 2012-02-29 → 2012-03-07 (+7d) | 2012-02-29 → 2012-03-08 (+8d) |  |  |  |  |  |
| 28 | 确定副本的规则 | 2012-03-01 → 2012-03-08 (+7d) | 2012-03-05 → 2012-03-13 (+8d) |  |  |  |  |  |
| 29 | 素材内容和列表收集 | 2012-02-20 → 2012-03-01 (+10d) | 2012-03-06 → 2012-03-19 (+13d) |  |  | 6.5d → 17d |  |  |
| 30 | 挑选和确认 | 2012-03-07 → 2012-03-19 (+12d) | 2012-03-07 → 2012-03-20 (+13d) |  |  | 1.5d → 17d |  |  |
| 31 | 美术核对和制作 | 2012-03-08 → 2012-03-20 (+12d) | 2012-03-08 → 2012-03-21 (+13d) |  |  | 1.5d → 17d |  |  |
| 32 | 地图编辑器编辑 | 2012-03-09 → 2012-03-21 (+12d) | 2012-03-15 → 2012-03-28 (+13d) |  |  | 1.5d → 17d |  |  |
| 39 | **任务和剧情模块** | 2012-03-20 → 2012-03-28 (+8d) | 2012-03-23 → 2012-04-02 (+10d) |  |  | 21.5d → 17d | 22 → 25 |  |
| 40 | 详细策划和DEMO | 2012-03-20 → 2012-03-28 (+8d) | 2012-03-23 → 2012-04-02 (+10d) |  |  | 1.5d → 17d | 24 → none |  |
| 41 | 和美术和技术核对需求，做需求分析 | 2012-03-23 → 2012-04-02 (+10d) | 2012-03-23 → 2012-04-02 (+10d) |  |  | 1.5d → 17d |  |  |
| 42 | **上线前其他模块** | 2012-03-26 → 2012-04-03 (+8d) | 2012-03-27 → 2012-04-04 (+8d) |  |  | 21.5d → 17d |  |  |
| 43 | 详细策划和DEMO | 2012-03-26 → 2012-04-03 (+8d) | 2012-03-27 → 2012-04-04 (+8d) |  |  | 1.5d → 17d |  |  |
| 44 | 和美术和技术核对需求，做需求分析 | 2012-03-27 → 2012-04-04 (+8d) | 2012-03-27 → 2012-04-04 (+8d) |  |  | 8.5d → 29.5d |  |  |
| 45 | **任务，剧情，订单内容** |  | 2012-04-09 → 2012-04-17 (+8d) | 45.5d → 51.5d |  | 21.5d → 17d |  |  |
| 49 | **任务描述的详细内容** | 2012-03-27 → 2012-04-04 (+8d) | 2012-04-09 → 2012-04-17 (+8d) |  |  | 21.5d → 17d |  |  |
| 50 | 主线任务文案样板 | 2012-03-27 → 2012-04-04 (+8d) | 2012-03-29 → 2012-04-06 (+8d) |  |  | 1.5d → 17d |  |  |
| 51 | 支线任务文案样板 | 2012-03-29 → 2012-04-06 (+8d) | 2012-04-02 → 2012-04-10 (+8d) |  |  | 5d → 26d |  |  |
| 52 | 对白 | 2012-03-29 → 2012-04-06 (+8d) | 2012-04-09 → 2012-04-17 (+8d) |  |  | 1.5d → 17d |  |  |
| 61 | **美术开发** |  |  |  |  | 27d → 28.5d |  | resources none → 大强 |
| 78 | **美术人设开发** |  | 2012-03-30 → 2012-02-14 (-45d) | 34d? → 1d? |  | 27d → 61.5d |  |  |
| 82 | 过场动画 |  |  |  |  | 27d → 28.5d | 155 → 81 |  |
| 83 | **场景** | 2012-03-01 → 2012-02-27 (-3d) | 2012-03-30 → 2012-03-08 (-22d) | 22d? → 9d? |  | 27d → 44.5d |  | constraint start no earlier than 2012-03-01 → none; resources 张燕南 → 张燕南; 大强 |
| 84 | 世界地图 | 2012-03-29 → 2012-02-28 (-30d) | 2012-03-30 → 2012-03-08 (-22d) | 2d → 8d? |  | 1d → 44.5d |  | constraint start no earlier than 2012-02-10 → finish no earlier than 2012-03-08; resources 余颖慧 → 大强 |
| 87 | **战斗功能模块开发** | 2012-02-06 A |  | 21d → 21d? | 0% → 98% | 46d → 24.5d |  |  |
| 88 | **策划和前期准备** | 2012-02-06 A | 2012-02-10 A |  | 0% → 100% | 62d → none |  |  |
| 89 | 策划初稿审核（详细策划案，原型，UI需求） | 2012-02-06 A | 2012-02-07 A |  | 0% → 100% | 62d → none |  |  |
| 90 | 模块前后端需求分析，设计，定义接口 | 2012-02-08 A | 2012-02-10 A |  | 0% → 100% | 62d → none |  |  |
| 91 | 美术图量分析和风格确定 | 2012-02-08 A | 2012-02-10 A |  | 0% → 100% | 62d → none |  |  |
| 92 | **开发** | 2012-02-09 → 2012-02-10 A (+1d) | 2012-02-29 → 2012-03-02 (+2d) | 15d → 16d | 0% → 99% | 46d → 0d |  |  |
| 93 | **美术前期素材（给到技术开发起步用）** | 2012-02-10 A | 2012-02-13 A |  | 0% → 100% | 61d → none |  |  |
| 94 | 1个场景 | 2012-02-10 A | 2012-02-13 A |  | 0% → 100% | 61d → none |  |  |
| 95 | 1个人物 | 2012-02-10 A | 2012-02-13 A |  | 0% → 100% | 61d → none |  |  |
| 96 | 1个UI初稿 | 2012-02-10 A | 2012-02-13 A |  | 0% → 100% | 61d → none |  |  |
| 97 | **前端开发** | 2012-02-09 → 2012-02-10 A (+1d) | 2012-02-29 → 2012-03-02 (+2d) | 15d → 16d | 0% → 99% | 46d → 0d |  |  |
| 98 | 项目需求分析，模块定义，接口定义，代码设计 | 2012-02-10 A | 2012-02-14 A |  | 0% → 100% | 60d → none |  |  |
| 99 | CODING | 2012-02-09 → 2012-02-15 A (+6d) | 2012-02-29 → 2012-03-02 A (+2d) | 15d → 13d | 0% → 100% | 46d → none | none → 98 |  |
| 100 | **后端开发** | 2012-02-13 A | 2012-02-28 A |  | 0% → 100% | 50d → none |  |  |
| 101 | 项目需求分析，模块定义，接口定义，代码设计 | 2012-02-13 A | 2012-02-14 A |  | 0% → 100% | 60d → none |  |  |
| 102 | CODING | 2012-02-14 A | 2012-02-28 A |  | 0% → 100% | 50d → none |  |  |
| 103 | **美术工作** | 2012-02-15 A | 2012-02-29 A |  | 0% → 100% | 49d → none |  |  |
| 104 | 美术UI开发 | 2012-02-20 A | 2012-02-28 A |  | 0% → 100% | 50d → none |  |  |
| 105 | 美术道具开发 | 2012-02-20 A | 2012-02-23 A |  | 0% → 100% | 53d → none |  |  |
| 106 | 美术人设开发 | 2012-02-15 A | 2012-02-29 A |  | 0% → 100% | 49d → none |  |  |
| 107 | **联调和测试** | 2012-03-01 → 2012-03-05 (+4d) |  | 3d → 1d? |  | 46d → 24.5d |  | constraint start no earlier than 2012-02-28 → none |
| 109 | **合成模块开发** | 2012-02-06 A | 2012-02-24 → 2012-02-27 (+3d) | 15d → 16d? | 0% → 97% | 6d → 10.5d |  |  |
| 110 | **策划和前期准备** | 2012-02-06 A | 2012-02-14 A |  | 0% → 100% | 14d → none |  |  |
| 111 | 策划初稿审核（详细策划案，原型，UI需求） | 2012-02-06 A | 2012-02-07 A |  | 0% → 100% | 19d → none |  |  |
| 112 | 模块前后端需求分析，设计，定义接口 | 2012-02-10 A | 2012-02-14 A |  | 0% → 100% | 14d → none |  |  |
| 113 | 美术图量分析和风格确定 | 2012-02-09 A | 2012-02-10 A |  | 0% → 100% | 16d → none |  |  |
| 114 | **开发** | 2012-02-22 A | 2012-02-23 A |  | 0% → 100% | 7d → none |  |  |
| 115 | **美术前期素材（给到技术开发起步用）** | 2012-02-22 A | 2012-02-23 A |  | 0% → 100% | 7d → none |  |  |
| 116 | 1个场景 | 2012-02-22 A | 2012-02-23 A |  | 0% → 100% | 7d → none |  |  |
| 117 | 1个人物 | 2012-02-22 A | 2012-02-23 A |  | 0% → 100% | 7d → none |  |  |
| 118 | 1个UI初稿 | 2012-02-22 A | 2012-02-23 A |  | 0% → 100% | 7d → none |  |  |
| 119 | **前端开发** | 2012-02-09 A | 2012-02-21 A |  | 0% → 100% | 9d → none |  |  |
| 120 | 项目需求分析，模块定义，接口定义，代码设计 | 2012-02-13 A | 2012-02-15 A |  | 0% → 100% | 13d → none |  |  |
| 121 | CODING | 2012-02-09 A | 2012-02-21 A |  | 0% → 100% | 9d → none |  |  |
| 122 | **后端开发** | 2012-02-13 A | 2012-02-22 A |  | 0% → 100% | 7d → none |  |  |

| ID | Task | Start | Finish | Duration | Complete | Total float | Predecessors | Other |
| --- | --- | --- | --- | --- | --- | --- | --- | --- |
| 123 | 项目需求分析，模块定义，接口定义，代码设计 | 2012-02-13 A | 2012-02-14 A |  | 0% → 100% | 14d → none |  |  |
| 124 | CODING | 2012-02-14 A | 2012-02-22 A |  | 0% → 100% | 6d → none |  |  |
| 125 | 联调和测试 | 2012-02-23 A | 2012-02-24 A |  | 0% → 100% | 6d → none |  |  |
| 130 | **经营模块开发** | 2012-02-23 A |  |  | 0% → 32% | 17d → 37.5d |  |  |
| 131 | **策划和前期准备** | 2012-02-23 A | 2012-02-28 A |  | 0% → 100% | 17d → none |  |  |
| 132 | 策划初稿审核（详细策划案，原型，逻辑流程图） | 2012-02-23 A | 2012-02-24 A |  | 0% → 100% | 22d → none |  |  |
| 133 | 模块前后端需求分析，设计，定义接口 | 2012-02-27 A | 2012-02-28 A |  | 0% → 100% | 22d → none |  |  |
| 134 | 美术图量分析和确定前置美术 | 2012-02-23 A | 2012-02-24 A |  | 0% → 100% | 17d → none |  |  |
| 135 | **开发** | 2012-02-24 A |  |  | 0% → 23% | 18d → 42.5d |  |  |
| 136 | **美术前期素材（给到技术开发起步用）** | 2012-02-24 A | 2012-02-27 A |  | 0% → 100% | 32d → none |  |  |
| 137 | 1个场景 | 2012-02-24 A | 2012-02-27 A |  | 0% → 100% | 32d → none |  |  |
| 138 | 1个人物 | 2012-02-24 A | 2012-02-27 A |  | 0% → 100% | 32d → none |  |  |
| 139 | 1个UI初稿 | 2012-02-24 A | 2012-02-27 A |  | 0% → 100% | 32d → none |  |  |
| 147 | **世界地图模块开发** | 2012-03-29 → 2012-03-06 (-23d) | 2012-04-03 → 2012-03-09 (-25d) |  |  | 0d → 24.5d | 163 → 87 | resources 夏俊杰; 章昕 → 章昕; 张诚 |
| 148 | **策划和前期准备** | 2012-03-29 → 2012-03-06 (-23d) | 2012-03-30 → 2012-03-07 (-23d) |  |  | 0d → 24.5d | 22 → none |  |
| 149 | 策划初稿审核（详细策划案，原型，UI需求） | 2012-03-29 → 2012-03-06 (-23d) | 2012-03-29 → 2012-03-06 (-23d) |  |  | 0d → 24.5d |  |  |
| 150 | 模块前后端需求分析，设计，定义接口 | 2012-03-30 → 2012-03-07 (-23d) | 2012-03-30 → 2012-03-07 (-23d) |  |  | 0d → 24.5d |  |  |
| 151 | 美术图量分析和风格确定 | 2012-03-29 → 2012-03-06 (-23d) | 2012-03-29 → 2012-03-06 (-23d) |  |  | 3d → 27.5d |  |  |
| 152 | **开发** | 2012-03-29 → 2012-03-06 (-23d) | 2012-04-02 → 2012-03-08 (-25d) |  |  | 0d → 24.5d |  |  |
| 153 | **美术前期素材（给到技术开发起步用）** | 2012-03-29 → 2012-03-06 (-23d) | 2012-03-30 → 2012-03-07 (-23d) |  |  | 1d → 25.5d |  |  |
| 155 | 动效 | 2012-02-14 → 2012-03-06 (+21d) | 2012-03-09 → 2012-03-07 (-2d) | 19d? → 2d |  | 27d → 25.5d |  | constraint none → start no earlier than 2012-02-10; resources 大强 → 赵子敬 |
| 156 | **前端开发** | 2012-03-29 → 2012-03-06 (-23d) | 2012-04-02 → 2012-03-08 (-25d) |  |  | 0d → 24.5d |  | resources 张琦; 夏俊杰 → 张琦; 张诚 |
| 157 | 项目需求分析，模块定义，接口定义，代码设计 | 2012-04-02 → 2012-03-08 (-25d) | 2012-04-02 → 2012-03-08 (-25d) |  |  | 0d → 24.5d |  |  |
| 158 | CODING | 2012-03-29 → 2012-03-06 (-23d) | 2012-04-02 → 2012-03-08 (-25d) |  |  | 0d → 24.5d |  |  |
| 159 | **后端开发** | 2012-03-29 → 2012-03-06 (-23d) | 2012-04-02 → 2012-03-08 (-25d) |  |  | 0d → 24.5d |  |  |
| 160 | 项目需求分析，模块定义，接口定义，代码设计 | 2012-03-29 → 2012-03-06 (-23d) | 2012-03-29 → 2012-03-06 (-23d) |  |  | 2d → 26.5d |  |  |
| 161 | CODING | 2012-03-29 → 2012-03-06 (-23d) | 2012-04-02 → 2012-03-08 (-25d) |  |  | 0d → 24.5d |  |  |
| 162 | 联调和测试 | 2012-04-03 → 2012-03-09 (-25d) | 2012-04-03 → 2012-03-09 (-25d) |  |  | 0d → 24.5d |  |  |
| 163 | **冒险模块开发** | 2012-03-06 → 2012-03-13 (+7d) | 2012-03-28 → 2012-04-05 (+8d) |  |  |  |  |  |
| 164 | **策划和前期准备** | 2012-03-06 → 2012-03-13 (+7d) | 2012-03-13 → 2012-03-21 (+8d) |  |  |  |  |  |
| 165 | 策划初稿审核（详细策划案，原型，UI需求） | 2012-03-06 → 2012-03-13 (+7d) | 2012-03-08 → 2012-03-16 (+8d) |  |  |  |  |  |
| 166 | 模块前后端需求分析，设计，定义接口 | 2012-03-09 → 2012-03-16 (+7d) | 2012-03-13 → 2012-03-21 (+8d) |  |  |  |  |  |
| 167 | 美术图量分析 | 2012-03-09 → 2012-03-16 (+7d) | 2012-03-12 → 2012-03-20 (+8d) |  |  |  |  |  |
| 168 | **开发** | 2012-03-13 → 2012-03-20 (+7d) | 2012-03-21 → 2012-03-29 (+8d) |  |  |  |  |  |
| 169 | **美术前期素材（给到技术开发起步用）** | 2012-03-13 → 2012-03-20 (+7d) | 2012-03-14 → 2012-03-22 (+8d) |  |  |  |  |  |
| 170 | 1个场景 | 2012-03-13 → 2012-03-20 (+7d) | 2012-03-14 → 2012-03-22 (+8d) |  |  |  |  |  |
| 171 | 1个人物 | 2012-03-13 → 2012-03-20 (+7d) | 2012-03-14 → 2012-03-22 (+8d) |  |  |  |  |  |
| 172 | 1个UI初稿 | 2012-03-13 → 2012-03-20 (+7d) | 2012-03-14 → 2012-03-22 (+8d) |  |  |  |  |  |
| 173 | **前端开发** | 2012-03-14 → 2012-03-21 (+7d) | 2012-03-21 → 2012-03-29 (+8d) |  |  |  |  |  |
| 174 | 项目需求分析，模块定义，接口定义，代码设计 | 2012-03-14 → 2012-03-21 (+7d) | 2012-03-15 → 2012-03-23 (+8d) |  |  |  |  |  |
| 175 | CODING | 2012-03-14 → 2012-03-21 (+7d) | 2012-03-21 → 2012-03-29 (+8d) |  |  |  |  |  |
| 176 | **后端开发** | 2012-03-13 → 2012-03-20 (+7d) | 2012-03-20 → 2012-03-28 (+8d) |  |  |  |  |  |
| 177 | 项目需求分析，模块定义，接口定义，代码设计 | 2012-03-13 → 2012-03-20 (+7d) | 2012-03-14 → 2012-03-22 (+8d) |  |  |  |  |  |
| 178 | CODING | 2012-03-13 → 2012-03-20 (+7d) | 2012-03-20 → 2012-03-28 (+8d) |  |  |  |  |  |
| 179 | 联调和测试 | 2012-03-22 → 2012-03-29 (+7d) | 2012-03-28 → 2012-04-05 (+8d) |  |  |  |  |  |
| 180 | **佣兵模块开发** | 2012-03-20 → 2012-03-12 (-8d) | 2012-04-10 → 2012-04-02 (-8d) |  |  | 17d → 24.5d | 130 → 147 |  |
| 181 | **策划和前期准备** | 2012-03-20 → 2012-03-12 (-8d) | 2012-03-26 → 2012-03-16 (-10d) |  |  | 17d → 24.5d |  |  |
| 182 | 策划初稿审核（详细策划案，原型，UI需求） | 2012-03-20 → 2012-03-12 (-8d) | 2012-03-21 → 2012-03-13 (-8d) |  |  | 17d → 24.5d |  |  |
| 183 | 模块前后端需求分析，设计，定义接口 | 2012-03-22 → 2012-03-14 (-8d) | 2012-03-26 → 2012-03-16 (-10d) |  |  | 17d → 24.5d |  |  |
| 184 | 美术图量分析 | 2012-03-22 → 2012-03-14 (-8d) | 2012-03-23 → 2012-03-15 (-8d) |  |  | 25d → 32.5d |  |  |
| 185 | **开发** | 2012-03-26 → 2012-03-16 (-10d) | 2012-04-03 → 2012-03-26 (-8d) |  |  | 18d → 25.5d |  |  |
| 186 | **美术前期素材（给到技术开发起步用）** | 2012-03-26 → 2012-03-16 (-10d) | 2012-03-27 → 2012-03-19 (-8d) |  |  | 27d → 34.5d |  |  |
| 187 | 1个场景 | 2012-03-26 → 2012-03-16 (-10d) | 2012-03-27 → 2012-03-19 (-8d) |  |  | 27d → 34.5d |  |  |
| 188 | 1个人物 | 2012-03-26 → 2012-03-16 (-10d) | 2012-03-27 → 2012-03-19 (-8d) |  |  | 27d → 34.5d |  |  |
| 189 | 1个UI初稿 | 2012-03-26 → 2012-03-16 (-10d) | 2012-03-27 → 2012-03-19 (-8d) |  |  | 27d → 34.5d |  |  |
| 190 | **前端开发** | 2012-03-27 → 2012-03-19 (-8d) | 2012-04-03 → 2012-03-26 (-8d) |  |  | 17d → 24.5d |  |  |
| 191 | 项目需求分析，模块定义，接口定义，代码设计 | 2012-03-27 → 2012-03-19 (-8d) | 2012-03-28 → 2012-03-20 (-8d) |  |  | 21d → 28.5d |  |  |
| 192 | CODING | 2012-03-27 → 2012-03-19 (-8d) | 2012-04-03 → 2012-03-26 (-8d) |  |  | 17d → 24.5d |  |  |
| 193 | **后端开发** | 2012-03-27 → 2012-03-19 (-8d) | 2012-04-03 → 2012-03-26 (-8d) |  |  | 22d → 29.5d |  |  |
| 194 | 项目需求分析，模块定义，接口定义，代码设计 | 2012-03-27 → 2012-03-19 (-8d) | 2012-03-28 → 2012-03-20 (-8d) |  |  | 26d → 33.5d |  |  |
| 195 | CODING | 2012-03-27 → 2012-03-19 (-8d) | 2012-04-03 → 2012-03-26 (-8d) |  |  | 22d → 29.5d |  |  |
| 196 | **美术工作** | 2012-03-26 → 2012-03-16 (-10d) | 2012-03-29 → 2012-03-21 (-8d) |  |  | 25d → 32.5d |  |  |
| 197 | 确定美术图量和美术风格 | 2012-03-26 → 2012-03-16 (-10d) | 2012-03-29 → 2012-03-21 (-8d) |  |  | 25d → 32.5d |  |  |
| 198 | 美术UI开发 | 2012-03-26 → 2012-03-16 (-10d) | 2012-03-29 → 2012-03-21 (-8d) |  |  | 25d → 32.5d |  |  |
| 199 | 美术道具开发 | 2012-03-26 → 2012-03-16 (-10d) | 2012-03-29 → 2012-03-21 (-8d) |  |  | 25d → 32.5d |  |  |
| 200 | 美术人设开发 | 2012-03-26 → 2012-03-16 (-10d) | 2012-03-29 → 2012-03-21 (-8d) |  |  | 25d → 32.5d |  |  |
| 201 | 联调和测试 | 2012-04-04 → 2012-03-27 (-8d) | 2012-04-10 → 2012-04-02 (-8d) |  |  | 17d → 24.5d |  |  |
| 202 | **道具模块开发** | 2012-04-11 → 2012-04-03 (-8d) | 2012-04-13 → 2012-04-05 (-8d) |  |  | 17d → 24.5d |  |  |
| 203 | **策划和前期准备** | 2012-04-11 → 2012-04-03 (-8d) | 2012-04-11 → 2012-04-03 (-8d) |  |  | 19d → 26.5d |  |  |
| 204 | 策划初稿审核（详细策划案，原型，UI需求） | 2012-04-11 → 2012-04-03 (-8d) | 2012-04-11 → 2012-04-03 (-8d) |  |  | 19d → 26.5d |  |  |

| ID | Task | Start | Finish | Duration | Total float | Predecessors | Other |
| --- | --- | --- | --- | --- | --- | --- | --- |
| 205 | 模块前后端需求分析，设计，定义接口 | 2012-04-11 → 2012-04-03 (-8d) | 2012-04-11 → 2012-04-03 (-8d) |  | 19d → 26.5d |  |  |
| 206 | **开发** | 2012-04-11 → 2012-04-03 (-8d) | 2012-04-13 → 2012-04-05 (-8d) |  | 17d → 24.5d |  |  |
| 207 | **美术前期素材（给到技术开发起步用）** | 2012-04-11 → 2012-04-03 (-8d) | 2012-04-12 → 2012-04-04 (-8d) |  | 18d → 25.5d |  |  |
| 208 | 1个UI初稿 | 2012-04-11 → 2012-04-03 (-8d) | 2012-04-12 → 2012-04-04 (-8d) |  | 18d → 25.5d |  |  |
| 209 | **前端开发** | 2012-04-11 → 2012-04-03 (-8d) | 2012-04-13 → 2012-04-05 (-8d) |  | 17d → 24.5d |  |  |
| 210 | 项目需求分析，模块定义，接口定义，代码设计 | 2012-04-11 → 2012-04-03 (-8d) | 2012-04-11 → 2012-04-03 (-8d) |  | 19d → 26.5d |  |  |
| 211 | CODING | 2012-04-11 → 2012-04-03 (-8d) | 2012-04-13 → 2012-04-05 (-8d) |  | 17d → 24.5d |  |  |
| 212 | **后端开发** | 2012-04-11 → 2012-04-03 (-8d) | 2012-04-13 → 2012-04-05 (-8d) |  | 17d → 24.5d |  |  |
| 213 | 项目需求分析，模块定义，接口定义，代码设计 | 2012-04-11 → 2012-04-03 (-8d) | 2012-04-11 → 2012-04-03 (-8d) |  | 19d → 26.5d |  |  |
| 214 | CODING | 2012-04-11 → 2012-04-03 (-8d) | 2012-04-13 → 2012-04-05 (-8d) |  | 17d → 24.5d |  |  |
| 215 | 联调和测试 | 2012-04-11 → 2012-04-03 (-8d) | 2012-04-11 → 2012-04-03 (-8d) |  | 19d → 26.5d |  |  |
| 216 | **任务和剧情模块开发** | 2012-04-04 → 2012-04-05 (+1d) | 2012-04-17 → 2012-04-19 (+2d) |  |  | 147 → 163 |  |
| 217 | **策划和前期准备** | 2012-04-04 → 2012-04-05 (+1d) | 2012-04-04 → 2012-04-06 (+2d) |  |  |  |  |
| 218 | 策划初稿审核（详细策划案，原型，UI需求） | 2012-04-04 → 2012-04-05 (+1d) | 2012-04-04 → 2012-04-06 (+2d) |  |  |  |  |
| 219 | 模块前后端需求分析，设计，定义接口 | 2012-04-04 → 2012-04-05 (+1d) | 2012-04-04 → 2012-04-06 (+2d) |  |  |  |  |
| 220 | 美术图量分析和风格确定 | 2012-04-04 → 2012-04-05 (+1d) | 2012-04-04 → 2012-04-06 (+2d) |  |  |  |  |
| 221 | **美术前期素材（给到技术开发起步用）** | 2012-04-05 → 2012-04-06 (+1d) | 2012-04-06 → 2012-04-10 (+4d) |  |  |  |  |
| 222 | 1个UI初稿 | 2012-04-05 → 2012-04-06 (+1d) | 2012-04-06 → 2012-04-10 (+4d) |  |  |  |  |
| 223 | **前端开发** | 2012-04-05 → 2012-04-06 (+1d) | 2012-04-10 → 2012-04-12 (+2d) |  |  |  |  |
| 224 | 项目需求分析，模块定义，接口定义，代码设计 | 2012-04-05 → 2012-04-06 (+1d) | 2012-04-05 → 2012-04-09 (+4d) |  |  |  |  |
| 225 | CODING | 2012-04-05 → 2012-04-06 (+1d) | 2012-04-10 → 2012-04-12 (+2d) |  |  |  |  |
| 226 | **后端开发** | 2012-04-05 → 2012-04-06 (+1d) | 2012-04-10 → 2012-04-12 (+2d) |  |  |  |  |
| 227 | 项目需求分析，模块定义，接口定义，代码设计 | 2012-04-05 → 2012-04-06 (+1d) | 2012-04-05 → 2012-04-09 (+4d) |  |  |  |  |
| 228 | CODING | 2012-04-05 → 2012-04-06 (+1d) | 2012-04-10 → 2012-04-12 (+2d) |  |  |  |  |
| 229 | 联调和测试 | 2012-04-11 → 2012-04-12 (+1d) | 2012-04-17 → 2012-04-19 (+2d) |  |  |  |  |
| 230 | **上线前需完成模块** | 2012-04-18 → 2012-04-19 (+1d) | 2012-04-20 → 2012-04-24 (+4d) |  |  |  |  |
| 231 | **交互系统** | 2012-04-18 → 2012-04-19 (+1d) | 2012-04-20 → 2012-04-24 (+4d) |  |  |  |  |
| 232 | 策划初稿审核 | 2012-04-18 → 2012-04-19 (+1d) | 2012-04-19 → 2012-04-23 (+4d) |  |  |  |  |
| 233 | 开发 | 2012-04-18 → 2012-04-19 (+1d) | 2012-04-20 → 2012-04-24 (+4d) |  |  |  |  |
| 234 | 测试 | 2012-04-18 → 2012-04-19 (+1d) | 2012-04-19 → 2012-04-23 (+4d) |  |  |  |  |
| 235 | **礼物系统** | 2012-04-18 → 2012-04-19 (+1d) | 2012-04-19 → 2012-04-23 (+4d) |  |  |  |  |
| 236 | 移植 | 2012-04-18 → 2012-04-19 (+1d) | 2012-04-19 → 2012-04-23 (+4d) |  |  |  |  |
| 237 | 导入礼物的内容 | 2012-04-18 → 2012-04-19 (+1d) | 2012-04-19 → 2012-04-23 (+4d) |  |  |  |  |
| 238 | 测试 | 2012-04-18 → 2012-04-19 (+1d) | 2012-04-18 → 2012-04-20 (+2d) |  |  |  |  |
| 239 | **消息和日志** | 2012-04-18 → 2012-04-19 (+1d) | 2012-04-19 → 2012-04-23 (+4d) |  |  |  |  |
| 240 | 移植 | 2012-04-18 → 2012-04-19 (+1d) | 2012-04-19 → 2012-04-23 (+4d) |  |  |  |  |
| 241 | 导入礼物的内容 | 2012-04-18 → 2012-04-19 (+1d) | 2012-04-19 → 2012-04-23 (+4d) |  |  |  |  |
| 242 | 测试 | 2012-04-18 → 2012-04-19 (+1d) | 2012-04-18 → 2012-04-20 (+2d) |  |  |  |  |
| 243 | **新手引导** | 2012-04-18 → 2012-04-19 (+1d) | 2012-04-19 → 2012-04-23 (+4d) |  |  |  |  |
| 244 | 移植 | 2012-04-18 → 2012-04-19 (+1d) | 2012-04-19 → 2012-04-23 (+4d) |  |  |  |  |
| 245 | 导入礼物的内容 | 2012-04-18 → 2012-04-19 (+1d) | 2012-04-19 → 2012-04-23 (+4d) |  |  |  |  |
| 246 | 测试 | 2012-04-18 → 2012-04-19 (+1d) | 2012-04-18 → 2012-04-20 (+2d) |  |  |  |  |
| 247 | **每日登陆奖励** | 2012-04-18 → 2012-04-19 (+1d) | 2012-04-19 → 2012-04-23 (+4d) |  |  |  |  |
| 248 | 移植 | 2012-04-18 → 2012-04-19 (+1d) | 2012-04-19 → 2012-04-23 (+4d) |  |  |  |  |
| 249 | 导入礼物的内容 | 2012-04-18 → 2012-04-19 (+1d) | 2012-04-19 → 2012-04-23 (+4d) |  |  |  |  |
| 250 | 测试 | 2012-04-18 → 2012-04-19 (+1d) | 2012-04-18 → 2012-04-20 (+2d) |  |  |  |  |
| 251 | **后台数据监控** | 2012-04-23 → 2012-04-24 (+1d) | 2012-04-24 → 2012-04-26 (+2d) |  |  |  |  |
| 252 | 策划 | 2012-04-23 → 2012-04-24 (+1d) | 2012-04-24 → 2012-04-26 (+2d) |  |  |  |  |
| 253 | 开发 | 2012-04-23 → 2012-04-24 (+1d) | 2012-04-24 → 2012-04-26 (+2d) |  |  |  |  |
| 254 | 测试 | 2012-04-23 → 2012-04-24 (+1d) | 2012-04-23 → 2012-04-25 (+2d) |  | 8d → 11d |  |  |
| 255 | **测试** | 2012-04-18 → 2012-04-19 (+1d) | 2012-05-03 → 2012-05-07 (+4d) |  |  |  |  |
| 256 | 测试计划 | 2012-04-18 → 2012-04-19 (+1d) | 2012-04-26 → 2012-04-30 (+4d) |  |  |  |  |
| 257 | 功能测试 | 2012-04-18 → 2012-04-19 (+1d) | 2012-04-19 → 2012-04-23 (+4d) |  |  |  |  |
| 258 | 性能测试 | 2012-04-18 → 2012-04-19 (+1d) | 2012-04-25 → 2012-04-27 (+2d) |  |  |  |  |
| 259 | 易用性测试 | 2012-04-18 → 2012-04-19 (+1d) | 2012-04-18 → 2012-04-20 (+2d) |  |  |  | was named 易用行测试 |
| 261 | **上线流程** | 2012-05-04 → 2012-05-07 (+3d) | 2012-05-08 → 2012-05-10 (+2d) | 3d → 3d? |  |  |  |
| 262 | **接入准备** | 2012-05-04 → 2012-05-07 (+3d) | 2012-05-08 → 2012-05-10 (+2d) |  |  |  |  |
| 263 | 商务合作会谈 | 2012-05-04 → 2012-05-07 (+3d) | 2012-05-07 → 2012-05-09 (+2d) |  |  |  |  |
| 264 | API接入 | 2012-05-04 → 2012-05-07 (+3d) | 2012-05-08 → 2012-05-10 (+2d) |  |  |  |  |
| 265 | 合同签订 | 2012-05-04 → 2012-05-07 (+3d) | 2012-05-07 → 2012-05-09 (+2d) |  |  |  |  |
